# Deep_SPM_Assignment_1_100%

Schedule from MS Project, 2024-01-29 to 2024-06-17.
Illinois Institute of Technology

## Calendars

- Standard: Mon-Fri 08:00-12:00, 13:00-17:00; Sat-Sun off.

## Resources

| Resource |
| --- |
| Project Manager 1 |
| Project Manager 2 |
| Project Manager 3 |
| Requirement Engineers 1 |
| Requirement Engineers 2 |
| Requirement Engineers 3 |
| Requirement Engineers 4 |
| Requirement Engineers 8 |
| Requirement Engineers 9 |
| Requirement Engineers 10 |
| Requirement Engineers 11 |
| Requirement Engineers 12 |
| Requirement Engineers 18 |
| Requirement Engineers 19 |
| System Engineers 1 |
| System Engineers 2 |
| System Engineers 3 |
| System Engineers 4 |
| System Engineers 8 |
| System Engineers 9 |
| System Engineers 11 |
| System Engineers 12 |
| System Engineers 13 |
| Programmers/Software Engineers 1 |
| Programmers/Software Engineers 2 |
| Programmers/Software Engineers 5 |
| Programmers/Software Engineers 6 |
| Programmers/Software Engineers 7 |
| Programmers/Software Engineers 8 |
| Programmers/Software Engineers 9 |
| Programmers/Software Engineers 10 |
| Programmers/Software Engineers 11 |
| Programmers/Software Engineers 12 |
| Test Engineers 1 |
| Test Engineers 2 |
| Test Engineers 3 |
| Test Engineers 4 |
| Test Engineers 5 |
| Test Engineers 6 |
| Test Engineers 7 |
| Test Engineers 8 |
| Test Engineers 9 |
| Test Engineers 10 |
| Documentation Engineers 1 |
| Documentation Engineers 2 |
| Documentation Engineers 3 |
| Documentation Engineers 4 |
| Documentation Engineers 5 |
| Documentation Engineers 6 |
| Documentation Engineers 7 |
| Documentation Engineers 8 |
| Documentation Engineers 9 |

## Schedule

| ID | WBS | Task | Duration | Start | Finish | Predecessors | Total slack | Free slack | Resources | Work |
| --- | --- | --- | --- | --- | --- | --- | --- | --- | --- | --- |
| 1 | 1 | **SPM_Assignment_1_100%** | 100.7d | 2024-01-29 | 2024-06-17 |  | 0d |  |  | 4835.15h |
| 2 | 1.1 | **Project Plan** | 3.56d | 2024-01-29 | 2024-02-01 |  | 0d |  |  | 84.11h |
| 3 | 1.1.1 | Write Plan | 1.59d | 2024-01-29 | 2024-01-30 |  | 0d |  | Project Manager 1; Project Manager 3 | 25.52h |
| 4 | 1.1.2 | **Review Plan** | 1.43d | 2024-01-30 | 2024-02-01 | 3 | 0d |  |  | 50.05h |
| 5 | 1.1.2.1 | Preparation for review | 0.89d | 2024-01-30 | 2024-01-31 | 3 | 0d |  | System Engineers 3; Programmers/Software Engineers 5; Documentation Engineers 3; Requirement Engineers 3 | 28.62h |
| 6 | 1.1.2.2 | Review Meeting | 0.54d | 2024-01-31 | 2024-02-01 | 5 | 0d |  | Documentation Engineers 3; Programmers/Software Engineers 5; Project Manager 1; Test Engineers 3; Requirement Engineers 3 | 21.43h |
| 7 | 1.1.3 | Rework | 0.53d | 2024-02-01 | 2024-02-01 | 6 | 0d |  | Project Manager 3; Project Manager 1 | 8.53h |
| 9 | 1.2 | **Risk Mitigation and Contingency Plan** | 4.12d | 2024-02-01 | 2024-02-07 | 2 | 0d |  |  | 48.36h |
| 10 | 1.2.1 | Write Plan | 1.63d | 2024-02-01 | 2024-02-05 | 2 | 0d |  | Project Manager 2 | 13.04h |
| 11 | 1.2.2 | **Review Plan** | 0.58d | 2024-02-05 | 2024-02-05 |  | 0d |  |  | 20.04h |
| 12 | 1.2.2.1 | Preparation for review | 0.41d | 2024-02-05 | 2024-02-05 | 10 | 0d |  | Requirement Engineers 8; System Engineers 4; Programmers/Software Engineers 6; Documentation Engineers 4 | 13.04h |
| 13 | 1.2.2.2 | Review Meeting | 0.17d | 2024-02-05 | 2024-02-05 | 12 | 0d |  | Programmers/Software Engineers 6; Test Engineers 6; Requirement Engineers 8; Project Manager 2; Documentation Engineers 4 | 7h |
| 14 | 1.2.3 | Rework | 1.91d | 2024-02-05 | 2024-02-07 | 13 | 0d |  | Project Manager 2 | 15.28h |
| 16 | 1.3 | **Requirement** | 5.92d | 2024-01-29 | 2024-02-05 |  | 1.77d | 0d |  | 179.31h |
| 17 | 1.3.1 | Write requirements | 1.39d | 2024-01-29 | 2024-01-30 |  | 1.77d | 0d | Requirement Engineers 1; Requirement Engineers 2; Requirement Engineers 19 | 33.44h |
| 18 | 1.3.2 | Write Use Case Model | 2.17d | 2024-01-30 | 2024-02-01 | 17 | 1.77d | 0d | Requirement Engineers 4; Requirement Engineers 9; Requirement Engineers 10 | 52h |
| 19 | 1.3.3 | **Review Requirements/ Use Case Model** | 1.68d | 2024-02-01 | 2024-02-05 |  | 1.77d |  |  | 61.25h |
| 20 | 1.3.3.1 | Preparation for review | 1.2d | 2024-02-01 | 2024-02-02 | 18 | 1.77d | 0d | System Engineers 9; Requirement Engineers 11; Requirement Engineers 12; Requirement Engineers 18 | 38.4h |
| 21 | 1.3.3.2 | Review Meeting | 0.48d | 2024-02-02 | 2024-02-05 | 20 | 1.77d | 0d | Requirement Engineers 1; System Engineers 9; Requirement Engineers 4; Requirement Engineers 11; Requirement Engineers 12; Requirement Engineers 18 | 22.85h |
| 22 | 1.3.4 | Rework | 0.68d | 2024-02-05 | 2024-02-05 | 21 | 1.77d |  | Requirement Engineers 10; Requirement Engineers 2; Requirement Engineers 9; Requirement Engineers 1; Requirement Engineers 4; Requirement Engineers 19 | 32.63h |
| 24 | 1.4 | **Analysis** | 6.14d | 2024-02-07 | 2024-02-15 | 16, 9 | 0d |  |  | 119.8h |
| 25 | 1.4.1 | Write Analysis Document | 2.47d | 2024-02-07 | 2024-02-12 | 16 | 0d |  | System Engineers 12; System Engineers 11 | 39.57h |
| 26 | 1.4.2 | **Review Analysis Document** | 2.13d | 2024-02-12 | 2024-02-14 |  | 0d |  |  | 55.59h |
| 27 | 1.4.2.1 | Preparation for Analysis Document | 1.56d | 2024-02-12 | 2024-02-13 | 25 | 0d |  | System Engineers 2; Documentation Engineers 6; System Engineers 1 | 37.53h |
| 28 | 1.4.2.2 | Review Meeting | 0.56d | 2024-02-13 | 2024-02-14 | 27 | 0d |  | Documentation Engineers 6; System Engineers 2; System Engineers 11; System Engineers 1 | 18.06h |
| 29 | 1.4.3 | Rework | 1.54d | 2024-02-14 | 2024-02-15 | 28 | 0d |  | System Engineers 12; System Engineers 11 | 24.64h |

| ID | WBS | Task | Duration | Start | Finish | Predecessors | Total slack | Free slack | Resources | Work |
| --- | --- | --- | --- | --- | --- | --- | --- | --- | --- | --- |
| 31 | 1.5 | **Design** | 16.6d | 2024-02-15 | 2024-03-11 | 24 | 0d |  |  | 371.43h |
| 32 | 1.5.1 | Write DD | 4.6d | 2024-02-15 | 2024-02-22 | 24 | 0d |  | System Engineers 8; System Engineers 2 | 73.6h |
| 33 | 1.5.2 | **Review DD** | 2.01d | 2024-02-22 | 2024-02-26 |  | 0d |  |  | 69.04h |
| 34 | 1.5.2.1 | Preparation for DD | 1.44d | 2024-02-22 | 2024-02-23 | 32 | 0d |  | System Engineers 4; System Engineers 9; System Engineers 11; Documentation Engineers 1 | 46h |
| 35 | 1.5.2.2 | Review Meeting | 0.58d | 2024-02-23 | 2024-02-26 | 34 | 0d |  | System Engineers 8; System Engineers 4; System Engineers 9; System Engineers 11; Documentation Engineers 1 | 23.04h |
| 36 | 1.5.3 | Rework | 3.61d | 2024-02-26 | 2024-03-01 | 35 | 0d |  | System Engineers 8; System Engineers 2 | 57.76h |
| 37 | 1.5.4 | Write Data Model (DM) | 4.25d | 2024-03-01 | 2024-03-07 | 36 | 0d |  | System Engineers 3; System Engineers 4; System Engineers 1 | 102h |
| 38 | 1.5.5 | **Review DM** | 0.97d | 2024-03-07 | 2024-03-08 |  | 0d |  |  | 41.43h |
| 39 | 1.5.5.1 | Preparation for DM | 0.67d | 2024-03-07 | 2024-03-07 | 37 | 0d |  | System Engineers 12; System Engineers 9; System Engineers 13; System Engineers 8; Documentation Engineers 2 | 26.62h |
| 40 | 1.5.5.2 | Review Meeting | 0.31d | 2024-03-07 | 2024-03-08 | 39 | 0d |  | System Engineers 12; System Engineers 4; System Engineers 9; System Engineers 13; System Engineers 8; Documentation Engineers 2 | 14.8h |
| 41 | 1.5.6 | Rework | 1.15d | 2024-03-08 | 2024-03-11 | 40 | 0d |  | System Engineers 4; System Engineers 3; System Engineers 1 | 27.6h |
| 43 | 1.6 | **Coding and unit test** | 50.44d | 2024-03-11 | 2024-05-20 | 31 | 0d |  |  | 2535h |
| 44 | 1.6.1 | Write Code | 29.05d | 2024-03-11 | 2024-04-19 | 31 | 0d |  | Programmers/Software Engineers 10; Programmers/Software Engineers 1; Programmers/Software Engineers 2; Programmers/Software Engineers 7; Programmers/Software Engineers 8; Programmers/Software Engineers 9; Programmers/Software Engineers 6 | 1626.96h |
| 45 | 1.6.2 | **Unit Testing** | 17.28d | 2024-04-19 | 2024-05-14 |  | 0d |  |  | 741.87h |
| 46 | 1.6.2.1 | Prepare/Execute Test Cases | 6.34d | 2024-04-19 | 2024-04-29 | 44 | 0d |  | Programmers/Software Engineers 8; Programmers/Software Engineers 9; Programmers/Software Engineers 10; Programmers/Software Engineers 11; Programmers/Software Engineers 12; Requirement Engineers 1 | 304.32h |
| 47 | 1.6.2.2 | Fix Found Defects | 5.29d | 2024-04-29 | 2024-05-07 | 46 | 0d |  | Programmers/Software Engineers 7; Programmers/Software Engineers 6; Programmers/Software Engineers 2; Programmers/Software Engineers 5; Programmers/Software Engineers 1 | 211.75h |
| 48 | 1.6.2.3 | Test Fixed Defects | 5.64d | 2024-05-07 | 2024-05-14 | 47 | 0d |  | Programmers/Software Engineers 8; Programmers/Software Engineers 9; Programmers/Software Engineers 10; Programmers/Software Engineers 11; Programmers/Software Engineers 12 | 225.8h |
| 49 | 1.6.3 | **Code Inspection** | 4.11d | 2024-05-14 | 2024-05-20 |  | 0d |  |  | 166.17h |
| 50 | 1.6.3.1 | Preparation for Code Inspection | 2.13d | 2024-05-14 | 2024-05-16 | 48 | 0d |  | System Engineers 1; Programmers/Software Engineers 11; Programmers/Software Engineers 12; Programmers/Software Engineers 5 | 68.27h |
| 51 | 1.6.3.2 | Code Inspection Meeting | 0.79d | 2024-05-16 | 2024-05-17 | 50 | 0d |  | System Engineers 1; Programmers/Software Engineers 2; Programmers/Software Engineers 11; Programmers/Software Engineers 12; Programmers/Software Engineers 5 | 31.77h |
| 52 | 1.6.3.3 | Rework | 1.18d | 2024-05-17 | 2024-05-20 | 51 | 0d |  | Programmers/Software Engineers 9; Programmers/Software Engineers 10; Programmers/Software Engineers 7; Programmers/Software Engineers 8; Programmers/Software Engineers 2; Programmers/Software Engineers 6; Programmers/Software Engineers 1 | 66.13h |
| 54 | 1.7 | **Testing** | 94.78d | 2024-02-05 | 2024-06-17 |  | 0d |  |  | 1364.97h |
| 55 | 1.7.1 | Write test plan (TP) | 8.87d | 2024-02-05 | 2024-02-16 | 16 | 82.13d | 0d | Test Engineers 7; Test Engineers 5; Test Engineers 3; Test Engineers 1; Test Engineers 2; Test Engineers 4 | 425.78h |
| 56 | 1.7.2 | **Review TP** | 3.78d | 2024-02-16 | 2024-02-22 |  | 82.13d |  |  | 145.6h |
| 57 | 1.7.2.1 | Preparation for TP | 1.8d | 2024-02-16 | 2024-02-20 | 55 | 82.13d | 0d | Requirement Engineers 18; Test Engineers 8; Test Engineers 9; Test Engineers 10 | 57.76h |
| 58 | 1.7.2.2 | Review TP Meeting | 0.87d | 2024-02-20 | 2024-02-21 | 57 | 82.13d | 0d | Requirement Engineers 18; Test Engineers 10; Test Engineers 9; Test Engineers 8; Test Engineers 2 | 34.66h |
| 59 | 1.7.2.3 | Rework | 1.11d | 2024-02-21 | 2024-02-22 | 58 | 82.13d |  | Test Engineers 7; Test Engineers 2; Test Engineers 5; Test Engineers 3; Test Engineers 1; Test Engineers 4 | 53.18h |
| 60 | 1.7.3 | Execute TP (test cases) | 5.7d | 2024-05-20 | 2024-05-28 | 43 | 0d |  | Test Engineers 2; Test Engineers 8; Test Engineers 10; Test Engineers 9; Test Engineers 6 | 228.15h |
| 61 | 1.7.4 | Fix Found Defects | 7.94d | 2024-05-28 | 2024-06-07 | 60 | 0d |  | Programmers/Software Engineers 5; Programmers/Software Engineers 7; Programmers/Software Engineers 9; Programmers/Software Engineers 10; Programmers/Software Engineers 11 | 317.44h |
| 62 | 1.7.5 | Test Fixed Defects | 6.2d | 2024-06-07 | 2024-06-17 | 61 | 0d |  | Test Engineers 2; Test Engineers 8; Test Engineers 9; Test Engineers 10; Test Engineers 4 | 248h |

| ID | WBS | Task | Duration | Start | Finish | Predecessors | Total slack | Free slack | Resources | Work |
| --- | --- | --- | --- | --- | --- | --- | --- | --- | --- | --- |
| 64 | 1.8 | **Documentation** | 4.98d | 2024-02-05 | 2024-02-12 | 16 | 89.8d |  |  | 132.17h |
| 65 | 1.8.1 | User Documentation | 2.05d | 2024-02-05 | 2024-02-07 | 16 | 89.8d | 0d | Documentation Engineers 7; Documentation Engineers 8 | 32.83h |
| 66 | 1.8.2 | **Review UD** | 2.93d | 2024-02-07 | 2024-02-12 |  | 89.8d |  |  | 99.34h |
| 67 | 1.8.2.1 | Preparation for UD Review | 1.14d | 2024-02-07 | 2024-02-09 | 65 | 89.8d | 0d | Documentation Engineers 5; Requirement Engineers 19; System Engineers 13; Documentation Engineers 9 | 36.48h |
| 68 | 1.8.2.2 | Review UD Meeting | 0.69d | 2024-02-09 | 2024-02-09 | 67 | 89.8d | 0d | Requirement Engineers 19; System Engineers 13; Documentation Engineers 5; Documentation Engineers 8; Documentation Engineers 9 | 27.46h |
| 69 | 1.8.2.3 | Rework | 1.11d | 2024-02-09 | 2024-02-12 | 68 | 89.8d |  | Documentation Engineers 7; System Engineers 13; Requirement Engineers 19; Documentation Engineers 8 | 35.4h |
