# Deep_SPM_Project_1

Schedule from MS Project, 2024-01-29 to 2024-06-19.
Illinois Institute of Technology

## Calendars

- Standard: Mon-Fri 08:00-12:00, 13:00-17:00; Sat-Sun off.

## Resources

| Resource |
| --- |
| Project Manager 1 |
| Project Manager 2 |
| Project Manager 3 |
| Requirement Engineers 1 |
| Requirement Engineers 2 |
| Requirement Engineers 3 |
| Requirement Engineers 4 |
| Requirement Engineers 8 |
| Requirement Engineers 9 |
| Requirement Engineers 10 |
| Requirement Engineers 11 |
| Requirement Engineers 12 |
| Requirement Engineers 18 |
| Requirement Engineers 19 |
| System Engineers 1 |
| System Engineers 2 |
| System Engineers 3 |
| System Engineers 4 |
| System Engineers 8 |
| System Engineers 9 |
| System Engineers 11 |
| System Engineers 12 |
| System Engineers 13 |
| Programmers/Software Engineers 1 |
| Programmers/Software Engineers 2 |
| Programmers/Software Engineers 5 |
| Programmers/Software Engineers 6 |
| Programmers/Software Engineers 7 |
| Programmers/Software Engineers 8 |
| Programmers/Software Engineers 9 |
| Programmers/Software Engineers 10 |
| Programmers/Software Engineers 11 |
| Programmers/Software Engineers 12 |
| Test Engineers 1 |
| Test Engineers 2 |
| Test Engineers 3 |
| Test Engineers 4 |
| Test Engineers 5 |
| Test Engineers 6 |
| Test Engineers 7 |
| Test Engineers 8 |
| Test Engineers 9 |
| Test Engineers 10 |
| Documentation Engineers 1 |
| Documentation Engineers 2 |
| Documentation Engineers 3 |
| Documentation Engineers 4 |
| Documentation Engineers 5 |
| Documentation Engineers 6 |
| Documentation Engineers 7 |
| Documentation Engineers 8 |
| Documentation Engineers 9 |
| Project Manager 8 |
| Project Manager 9 |
| Project Manager 10 |
| Requirement Engineers 63 |
| Requirement Engineers 64 |
| Requirement Engineers 65 |
| Requirement Engineers 66 |
| Requirement Engineers 67 |
| System Engineers 20 |
| System Engineers 21 |
| System Engineers 22 |
| System Engineers 23 |
| System Engineers 24 |
| Programmers/Software Engineers 30 |
| Programmers/Software Engineers 31 |
| Programmers/Software Engineers 32 |
| Programmers/Software Engineers 33 |
| Programmers/Software Engineers 34 |
| Programmers/Software Engineers 35 |
| Test Engineers 38 |
| Test Engineers 39 |
| Test Engineers 40 |
| Test Engineers 41 |
| Documentation Engineers 46 |
| Documentation Engineers 47 |
| Documentation Engineers 48 |
| Documentation Engineers 49 |

## Schedule

| ID | WBS | Task | Duration | Start | Finish | Predecessors | Total slack | Free slack | Resources | Work |
| --- | --- | --- | --- | --- | --- | --- | --- | --- | --- | --- |
| 1 | 1 | **SPM_Project_1** | 102.49d | 2024-01-29 | 2024-06-19 |  | 0d |  |  | 4436.98h |
| 2 | 1.1 | **Project Plan** | 3.56d | 2024-01-29 | 2024-02-01 |  | 0d |  |  | 78.52h |
| 3 | 1.1.1 | Write Plan | 1.59d | 2024-01-29 | 2024-01-30 |  | 0d |  | Project Manager 1 | 12.76h |
| 4 | 1.1.2 | **Review Plan** | 1.43d | 2024-01-30 | 2024-02-01 | 3 | 0d |  |  | 61.5h |
| 5 | 1.1.2.1 | Preparation for review | 0.89d | 2024-01-30 | 2024-01-31 | 3 | 0d |  | System Engineers 3; Programmers/Software Engineers 5; Requirement Engineers 3; Test Engineers 3; Documentation Engineers 4 | 35.78h |
| 6 | 1.1.2.2 | Review Meeting | 0.54d | 2024-01-31 | 2024-02-01 | 5 | 0d |  | Programmers/Software Engineers 5; Project Manager 1; Test Engineers 3; Requirement Engineers 3; System Engineers 3; Documentation Engineers 4 | 25.72h |
| 7 | 1.1.3 | Rework | 0.53d | 2024-02-01 | 2024-02-01 | 6 | 0d |  | Project Manager 1 | 4.27h |
| 9 | 1.2 | **Risk Mitigation and Contingency Plan** | 4.12d | 2024-02-01 | 2024-02-07 | 2 | 1.79d |  |  | 53.02h |
| 10 | 1.2.1 | Write Plan | 1.63d | 2024-02-01 | 2024-02-05 | 2 | 1.79d | 0d | Project Manager 1 | 13.04h |
| 11 | 1.2.2 | **Review Plan** | 0.58d | 2024-02-05 | 2024-02-05 |  | 1.79d |  |  | 24.7h |
| 12 | 1.2.2.1 | Preparation for review | 0.41d | 2024-02-05 | 2024-02-05 | 10 | 1.79d | 0d | Requirement Engineers 8; Programmers/Software Engineers 6; Test Engineers 6; System Engineers 9; Documentation Engineers 6 | 16.3h |
| 13 | 1.2.2.2 | Review Meeting | 0.17d | 2024-02-05 | 2024-02-05 | 12 | 1.79d | 0d | Programmers/Software Engineers 6; Test Engineers 6; Requirement Engineers 8; Project Manager 1; System Engineers 9; Documentation Engineers 6 | 8.4h |
| 14 | 1.2.3 | Rework | 1.91d | 2024-02-05 | 2024-02-07 | 13 | 1.79d |  | Project Manager 1 | 15.28h |
| 16 | 1.3 | **Requirement** | 5.92d | 2024-02-01 | 2024-02-09 | 7 | 0d |  |  | 260.95h |
| 17 | 1.3.1 | Write requirements | 1.39d | 2024-02-01 | 2024-02-02 | 7 | 0d |  | Requirement Engineers 1; Requirement Engineers 2; Requirement Engineers 19; Requirement Engineers 4; Requirement Engineers 12; Requirement Engineers 18 | 66.88h |
| 18 | 1.3.2 | Write Use Case Model | 2.17d | 2024-02-02 | 2024-02-07 | 17 | 0d |  | Requirement Engineers 4; Requirement Engineers 9; Requirement Engineers 10; Requirement Engineers 2; Requirement Engineers 18; Requirement Engineers 19 | 104h |
| 19 | 1.3.3 | **Review Requirements/ Use Case Model** | 1.68d | 2024-02-07 | 2024-02-08 |  | 0d |  |  | 57.44h |
| 20 | 1.3.3.1 | Preparation for review | 1.2d | 2024-02-07 | 2024-02-08 | 18 | 0d |  | Documentation Engineers 2; Programmers/Software Engineers 1; System Engineers 2; Test Engineers 1 | 38.4h |
| 21 | 1.3.3.2 | Review Meeting | 0.48d | 2024-02-08 | 2024-02-08 | 20 | 0d |  | Documentation Engineers 2; Programmers/Software Engineers 1; System Engineers 2; Test Engineers 1; Requirement Engineers 2 | 19.04h |
| 22 | 1.3.4 | Rework | 0.68d | 2024-02-08 | 2024-02-09 | 21 | 0d |  | Requirement Engineers 2; Requirement Engineers 1; Requirement Engineers 4; Requirement Engineers 19; Requirement Engineers 12; Requirement Engineers 18 | 32.63h |
| 24 | 1.4 | **Analysis** | 6.14d | 2024-02-09 | 2024-02-19 | 16, 9 | 0d |  |  | 201.04h |
| 25 | 1.4.1 | Write Analysis Document | 2.47d | 2024-02-09 | 2024-02-13 | 16 | 0d |  | System Engineers 12; System Engineers 11; System Engineers 8; System Engineers 9 | 79.15h |
| 26 | 1.4.2 | **Review Analysis Document** | 2.13d | 2024-02-13 | 2024-02-16 |  | 0d |  |  | 72.61h |
| 27 | 1.4.2.1 | Preparation for Analysis Document | 1.56d | 2024-02-13 | 2024-02-15 | 25 | 0d |  | Documentation Engineers 1; Programmers/Software Engineers 2; Requirement Engineers 19; Test Engineers 2 | 50.04h |
| 28 | 1.4.2.2 | Review Meeting | 0.56d | 2024-02-15 | 2024-02-16 | 27 | 0d |  | System Engineers 11; Documentation Engineers 1; Programmers/Software Engineers 2; Requirement Engineers 19; Test Engineers 2 | 22.57h |
| 29 | 1.4.3 | Rework | 1.54d | 2024-02-16 | 2024-02-19 | 28 | 0d |  | System Engineers 12; System Engineers 11; System Engineers 8; System Engineers 9 | 49.28h |

| ID | WBS | Task | Duration | Start | Finish | Predecessors | Total slack | Free slack | Resources | Work |
| --- | --- | --- | --- | --- | --- | --- | --- | --- | --- | --- |
| 31 | 1.5 | **Design** | 16.6d | 2024-02-19 | 2024-03-13 | 24 | 0d |  |  | 603.88h |
| 32 | 1.5.1 | Write DD | 4.6d | 2024-02-19 | 2024-02-26 | 24 | 0d |  | System Engineers 8; System Engineers 2; System Engineers 1; System Engineers 9; System Engineers 12 | 184h |
| 33 | 1.5.2 | **Review DD** | 2.01d | 2024-02-26 | 2024-02-28 |  | 0d |  |  | 69.04h |
| 34 | 1.5.2.1 | Preparation for DD | 1.44d | 2024-02-26 | 2024-02-27 | 32 | 0d |  | Documentation Engineers 3; Programmers/Software Engineers 7; Requirement Engineers 8; Test Engineers 5 | 46h |
| 35 | 1.5.2.2 | Review Meeting | 0.58d | 2024-02-27 | 2024-02-28 | 34 | 0d |  | System Engineers 8; Documentation Engineers 3; Programmers/Software Engineers 7; Requirement Engineers 8; Test Engineers 5 | 23.04h |
| 36 | 1.5.3 | Rework | 3.61d | 2024-02-28 | 2024-03-04 | 35 | 0d |  | System Engineers 8; System Engineers 2; System Engineers 1; System Engineers 9; System Engineers 12 | 144.4h |
| 37 | 1.5.4 | Write Data Model (DM) | 4.25d | 2024-03-04 | 2024-03-11 | 36 | 0d |  | System Engineers 11; System Engineers 12; System Engineers 8; System Engineers 4 | 136h |
| 38 | 1.5.5 | **Review DM** | 0.97d | 2024-03-11 | 2024-03-12 |  | 0d |  |  | 33.64h |
| 39 | 1.5.5.1 | Preparation for DM | 0.67d | 2024-03-11 | 2024-03-11 | 37 | 0d |  | Documentation Engineers 4; Programmers/Software Engineers 8; Requirement Engineers 4; Test Engineers 8 | 21.3h |
| 40 | 1.5.5.2 | Review Meeting | 0.31d | 2024-03-11 | 2024-03-12 | 39 | 0d |  | System Engineers 12; Documentation Engineers 4; Programmers/Software Engineers 8; Requirement Engineers 4; Test Engineers 8 | 12.34h |
| 41 | 1.5.6 | Rework | 1.15d | 2024-03-12 | 2024-03-13 | 40 | 0d |  | System Engineers 11; System Engineers 12; System Engineers 8; System Engineers 4 | 36.8h |
| 43 | 1.6 | **Coding and unit test** | 50.44d | 2024-03-13 | 2024-05-22 | 31 | 0d |  |  | 1992.78h |
| 44 | 1.6.1 | Write Code | 29.05d | 2024-03-13 | 2024-04-23 | 31 | 0d |  | Programmers/Software Engineers 10; Programmers/Software Engineers 9; Programmers/Software Engineers 11; Programmers/Software Engineers 12 | 929.69h |
| 45 | 1.6.2 | **Unit Testing** | 17.28d | 2024-04-23 | 2024-05-16 |  | 0d |  |  | 925.26h |
| 46 | 1.6.2.1 | Prepare/Execute Test Cases | 6.34d | 2024-04-23 | 2024-05-01 | 44 | 0d |  | Programmers/Software Engineers 9; Programmers/Software Engineers 10; Programmers/Software Engineers 11; Programmers/Software Engineers 12; Programmers/Software Engineers 1; Programmers/Software Engineers 5; Programmers/Software Engineers 6 | 355.04h |
| 47 | 1.6.2.2 | Fix Found Defects | 5.29d | 2024-05-01 | 2024-05-08 | 46 | 0d |  | Programmers/Software Engineers 6; Programmers/Software Engineers 2; Programmers/Software Engineers 9; Programmers/Software Engineers 10; Programmers/Software Engineers 7; Programmers/Software Engineers 8 | 254.1h |
| 48 | 1.6.2.3 | Test Fixed Defects | 5.64d | 2024-05-08 | 2024-05-16 | 47 | 0d |  | Programmers/Software Engineers 9; Programmers/Software Engineers 10; Programmers/Software Engineers 11; Programmers/Software Engineers 12; Programmers/Software Engineers 1; Programmers/Software Engineers 5; Programmers/Software Engineers 6 | 316.12h |
| 49 | 1.6.3 | **Code Inspection** | 4.11d | 2024-05-16 | 2024-05-22 |  | 0d |  |  | 137.83h |
| 50 | 1.6.3.1 | Preparation for Code Inspection | 2.13d | 2024-05-16 | 2024-05-20 | 48 | 0d |  | Documentation Engineers 5; Requirement Engineers 2; System Engineers 2; Test Engineers 9 | 68.27h |
| 51 | 1.6.3.2 | Code Inspection Meeting | 0.79d | 2024-05-20 | 2024-05-21 | 50 | 0d |  | Documentation Engineers 5; Requirement Engineers 2; System Engineers 2; Test Engineers 9; Programmers/Software Engineers 10 | 31.77h |
| 52 | 1.6.3.3 | Rework | 1.18d | 2024-05-21 | 2024-05-22 | 51 | 0d |  | Programmers/Software Engineers 9; Programmers/Software Engineers 10; Programmers/Software Engineers 11; Programmers/Software Engineers 12 | 37.79h |
| 54 | 1.7 | **Testing** | 93.02d | 2024-02-09 | 2024-06-19 |  | 0d |  |  | 1056.52h |
| 55 | 1.7.1 | Write test plan (TP) | 8.87d | 2024-02-09 | 2024-02-22 | 16 | 80.37d | 0d | Test Engineers 7; Test Engineers 4; Test Engineers 6; Test Engineers 10 | 283.85h |
| 56 | 1.7.2 | **Review TP** | 3.78d | 2024-02-22 | 2024-02-28 |  | 80.37d |  |  | 127.87h |
| 57 | 1.7.2.1 | Preparation for TP | 1.8d | 2024-02-22 | 2024-02-26 | 55 | 80.37d | 0d | Documentation Engineers 6; Programmers/Software Engineers 5; Requirement Engineers 19; System Engineers 4 | 57.76h |
| 58 | 1.7.2.2 | Review TP Meeting | 0.87d | 2024-02-26 | 2024-02-27 | 57 | 80.37d | 0d | Documentation Engineers 6; Programmers/Software Engineers 5; Requirement Engineers 19; System Engineers 4; Test Engineers 7 | 34.66h |
| 59 | 1.7.2.3 | Rework | 1.11d | 2024-02-27 | 2024-02-28 | 58 | 80.37d |  | Test Engineers 4; Test Engineers 7; Test Engineers 6; Test Engineers 10 | 35.45h |
| 60 | 1.7.3 | Execute TP (test cases) | 5.7d | 2024-05-22 | 2024-05-30 | 43 | 0d |  | Test Engineers 8; Test Engineers 9; Test Engineers 2; Test Engineers 3; Test Engineers 5 | 228.15h |
| 61 | 1.7.4 | Fix Found Defects | 7.94d | 2024-05-30 | 2024-06-11 | 60 | 0d |  | Programmers/Software Engineers 10; Programmers/Software Engineers 2; Programmers/Software Engineers 6; Programmers/Software Engineers 8; Programmers/Software Engineers 12 | 317.44h |
| 62 | 1.7.5 | Test Fixed Defects | 6.2d | 2024-06-11 | 2024-06-19 | 61 | 0d |  | Test Engineers 4; Test Engineers 7 | 99.2h |

| ID | WBS | Task | Duration | Start | Finish | Predecessors | Total slack | Free slack | Resources | Work |
| --- | --- | --- | --- | --- | --- | --- | --- | --- | --- | --- |
| 64 | 1.8 | **Documentation** | 4.98d | 2024-02-09 | 2024-02-16 | 16 | 88.03d |  |  | 190.26h |
| 65 | 1.8.1 | User Documentation | 2.05d | 2024-02-09 | 2024-02-13 | 16 | 88.03d | 0d | Documentation Engineers 7; Documentation Engineers 8; Documentation Engineers 3; Documentation Engineers 6; Documentation Engineers 9 | 82.08h |
| 66 | 1.8.2 | **Review UD** | 2.93d | 2024-02-13 | 2024-02-16 |  | 88.03d |  |  | 108.19h |
| 67 | 1.8.2.1 | Preparation for UD Review | 1.14d | 2024-02-13 | 2024-02-14 | 65 | 88.03d | 0d | Programmers/Software Engineers 7; Requirement Engineers 12; System Engineers 3; Test Engineers 3 | 36.48h |
| 68 | 1.8.2.2 | Review UD Meeting | 0.69d | 2024-02-14 | 2024-02-15 | 67 | 88.03d | 0d | Documentation Engineers 8; Programmers/Software Engineers 7; Requirement Engineers 12; System Engineers 3; Test Engineers 3 | 27.46h |
| 69 | 1.8.2.3 | Rework | 1.11d | 2024-02-15 | 2024-02-16 | 68 | 88.03d |  | Documentation Engineers 7; Documentation Engineers 8; Documentation Engineers 3; Documentation Engineers 6; Documentation Engineers 9 | 44.25h |
